# Planificacion

Schedule from MS Project XML, 2012-10-23 to 2013-06-05.

## Calendars

- Estándar: Mon-Fri 08:00-12:00, 13:00-17:00; Sat-Sun off.

## Resources

| Resource |
| --- |
| Beatriz.G.C |
| Concepción.N.M |
| Daniel.C.R |
| Daniel.L.C |
| Diego.A.G |
| Federico.G.A |
| Gonzalo.P.S |
| Maria.D.C |
| Ricardo.C.B |
| TODOS |
| Grupo Servidor (Daniel.L, Daniel.C, Gonzalo) |
| Grupo Reglas de Juego (Diego, María, Ricardo) |
| Grupo Menus (Beatriz, Federico) |
| Grupo Graficos (Concepción) |

## Schedule

| ID | WBS | Task | Duration | Start | Finish | Predecessors | Total slack | Constraint | Resources | Work |
| --- | --- | --- | --- | --- | --- | --- | --- | --- | --- | --- |
| 1 | 1 | **Modelo de desarrollo (primera iteración)** | 8.1mo? | 2012-10-23 | 2013-06-05 |  | 0d |  |  | 8968h |
| 2 | 1.1 | **Fase Requisitos(Inicio)** | 1.3mo | 2012-10-23 | 2012-11-27 |  | 0d |  |  | 3296h |
| 3 | 1.1.1 | Elección de Herramientas de Desarrollo | 26d | 2012-10-23 | 2012-11-27 |  | 0d |  | TODOS | 208h |
| 4 | 1.1.2 | Elección de la temática del juego | 26d | 2012-10-23 | 2012-11-27 |  | 0d |  | TODOS | 208h |
| 5 | 1.1.3 | Planificación del Proyecto | 10d | 2012-10-23 | 2012-11-05 |  | 0d |  | Concepción.N.M; Federico.G.A; Gonzalo.P.S | 240h |
| 6 | 1.1.4 | Planificación de Reuniones | 10d | 2012-10-23 | 2012-11-05 |  | 0d |  | Concepción.N.M; Federico.G.A | 160h |
| 7 | 1.1.5 | Planificación Personal del trabajo | 10d | 2012-10-23 | 2012-11-05 |  | 0d |  | Federico.G.A | 80h |
| 8 | 1.1.6 | Chat para estudio de servidor a tiempo real | 10d | 2012-10-23 | 2012-11-05 |  | 0d |  | Daniel.C.R; Daniel.L.C; Diego.A.G | 240h |
| 9 | 1.1.7 | Prototipo Interfaz | 10d | 2012-10-23 | 2012-11-05 |  | 0d |  | Concepción.N.M; Gonzalo.P.S | 160h |
| 10 | 1.1.8 | Definición de Requisitos | 16d | 2012-11-06 | 2012-11-27 | 5, 6, 7, 8, 9 | 0d | start no earlier than 2012-11-05 | Concepción.N.M; Daniel.L.C; Gonzalo.P.S | 384h |
| 11 | 1.1.9 | Revisión Planificación | 16d | 2012-11-06 | 2012-11-27 | 5, 6, 7, 8, 9 | 0d |  | TODOS | 128h |
| 12 | 1.1.10 | Especificación Aplicación | 16d | 2012-11-06 | 2012-11-27 | 5, 6, 7, 8, 9 | 0d |  | Beatriz.G.C; Daniel.C.R; Federico.G.A | 384h |
| 13 | 1.1.11 | **Seguimiento y Creación de Tutoriales** | 10d | 2012-10-23 | 2012-11-05 |  | 0d |  |  | 720h |
| 14 | 1.1.11.1 | Libgdx | 10d | 2012-10-23 | 2012-11-05 |  | 0d |  | Maria.D.C; Ricardo.C.B | 160h |
| 15 | 1.1.11.2 | SmartFoxServer | 10d | 2012-10-23 | 2012-11-05 |  | 0d |  | Concepción.N.M; Daniel.C.R; Daniel.L.C; Diego.A.G | 320h |
| 16 | 1.1.11.3 | Xara | 10d | 2012-10-23 | 2012-11-05 |  | 0d |  | Concepción.N.M | 80h |
| 17 | 1.1.11.4 | Php | 10d | 2012-10-23 | 2012-11-05 |  | 0d |  | Beatriz.G.C; Federico.G.A | 160h |
| 18 | 1.1.12 | Creación de aplicación integrando libgdx y SFS | 16d | 2012-11-06 | 2012-11-27 | 13, 14, 15, 16, 17 | 0d |  | Diego.A.G; Maria.D.C; Ricardo.C.B | 384h |
| 19 | 1.2 | **Fase Elaboración** | 2mo | 2012-11-28 | 2013-01-22 | 2 | 0d |  |  | 1824h |
| 20 | 1.2.1 | Diseño de Gráficos Básicos de la Aplicación | 40d | 2012-11-28 | 2013-01-22 |  | 0d |  | Grupo Graficos (Concepción) | 320h |
| 21 | 1.2.2 | Diseño Basico del servidor (colas, investigacion bases de datos...) | 40d | 2012-11-28 | 2013-01-22 |  | 0d |  | Grupo Servidor (Daniel.L, Daniel.C, Gonzalo) | 320h |
| 22 | 1.2.3 | Revisión Planificación | 5d | 2012-11-28 | 2012-12-04 |  | 0d |  | Concepción.N.M; Gonzalo.P.S | 80h |
| 23 | 1.2.4 | Revisión Requisitos | 5d | 2012-11-28 | 2012-12-04 |  | 0d |  | Concepción.N.M; Gonzalo.P.S | 80h |
| 24 | 1.2.5 | Casos de Uso | 15d | 2012-12-05 | 2012-12-25 | 23 | 0d |  | Grupo Reglas de Juego (Diego, María, Ricardo); Grupo Menus (Beatriz, Federico) | 240h |
| 25 | 1.2.6 | Sistema de Menús Aplicación | 30d | 2012-12-05 | 2013-01-15 | 23 | 0d |  | Grupo Menus (Beatriz, Federico) | 240h |
| 26 | 1.2.7 | Arquitectura de la Aplicación | 10d | 2012-11-28 | 2012-12-11 |  | 0d |  | Grupo Reglas de Juego (Diego, María, Ricardo) | 80h |
| 27 | 1.2.8 | Puntos de Función | 6d | 2012-12-12 | 2012-12-19 | 26 | 0d |  | Federico.G.A | 48h |
| 28 | 1.2.9 | Funcionamiento Básico del Juego | 30d | 2012-12-12 | 2013-01-22 | 26 | 0d |  | Grupo Reglas de Juego (Diego, María, Ricardo) | 240h |
| 29 | 1.2.10 | Creación diagrama en gantter | 15d | 2012-11-28 | 2012-12-18 |  | 0d |  |  |  |
| 30 | 1.2.11 | Revisión de la planificación en gantter | 3d | 2013-01-16 | 2013-01-18 | 29 | 0d | start no earlier than 2013-01-16 | Beatriz.G.C; Concepción.N.M; Federico.G.A; Gonzalo.P.S | 96h |
| 31 | 1.2.12 | Documento de gestion de riesgos | 5d | 2013-01-07 | 2013-01-11 |  | 0d | start no earlier than 2013-01-07 | Gonzalo.P.S | 40h |
| 32 | 1.2.13 | Documento de calidad | 5d | 2013-01-07 | 2013-01-11 |  | 0d | start no earlier than 2013-01-07 | Concepción.N.M | 40h |

| ID | WBS | Task | Duration | Start | Finish | Predecessors | Total slack | Constraint | Resources | Work |
| --- | --- | --- | --- | --- | --- | --- | --- | --- | --- | --- |
| 33 | 1.3 | **Fase Construcción** | 3.4mo? | 2013-02-14 | 2013-05-20 | 19 | 0d |  |  | 3560h |
| 34 | 1.3.1 | Revision de documentacion. | 7d? | 2013-03-22 | 2013-04-01 |  | 0d | finish no earlier than 2013-04-01 |  |  |
| 35 | 1.3.2 | Diseño gráfico perfeccionado | 55d | 2013-02-14 | 2013-05-01 | 20 | 0d | start no earlier than 2013-02-14 | Grupo Graficos (Concepción); Beatriz.G.C | 880h |
| 36 | 1.3.3 | **Diseño Avanzado Servidor (base de datos, eventos de juego, listas de amigos..)** | 58d? | 2013-02-14 | 2013-05-06 | 21 | 0d |  | Grupo Servidor (Daniel.L, Daniel.C, Gonzalo) | 1176h |
| 37 | 1.3.3.1 | Investigacion de la integracion de la base de datos con el servidor. | 6d | 2013-02-14 | 2013-02-21 |  | 0d | finish no earlier than 2013-02-21 | Daniel.C.R | 48h |
| 38 | 1.3.3.2 | Investigacion evento de desconexion de un jugador. | 4d? | 2013-02-15 | 2013-02-20 |  | 0d | finish no earlier than 2013-02-20 | Gonzalo.P.S | 32h |
| 39 | 1.3.3.3 | Conexion al modo multijugador con perfiles creados en una BD. | 5d? | 2013-02-21 | 2013-02-27 |  | 0d | start no earlier than 2013-02-21 | Gonzalo.P.S | 64h |
| 40 | 1.3.3.4 | Asignacion de mejoras a barriles. | 6d? | 2013-02-26 | 2013-03-05 |  | 0d | finish no earlier than 2013-03-05 | Daniel.L.C | 48h |
| 41 | 1.3.3.5 | Gestion de creacion de partidas por parte del servidor. | 16d? | 2013-02-19 | 2013-03-12 |  | 0d | finish no earlier than 2013-03-12 | Daniel.C.R | 128h |
| 42 | 1.3.3.6 | Gestion de la explosion de la bomba. | 8d? | 2013-02-27 | 2013-03-08 |  | 0d | finish no earlier than 2013-03-08 | Gonzalo.P.S | 64h |
| 43 | 1.3.3.7 | Creacion de nuevos perfiles de usuario. | 10d? | 2013-03-11 | 2013-03-22 |  | 0d | start no earlier than 2013-03-11 | Gonzalo.P.S | 80h |
| 44 | 1.3.3.8 | Integrar colas modo normal. | 8d? | 2013-03-05 | 2013-03-14 |  | 0d | finish no earlier than 2013-03-14 | Daniel.L.C | 64h |
| 45 | 1.3.3.9 | Actualizar evento de desconexion | 7.5d? | 2013-03-28 | 2013-04-08 |  | 0d | finish no earlier than 2013-04-08 | Daniel.C.R; Daniel.L.C | 120h |
| 46 | 1.3.3.10 | Salir de cola | 9d? | 2013-04-03 | 2013-04-15 |  | 0d | finish no earlier than 2013-04-15 | Daniel.C.R; Daniel.L.C | 144h |
| 47 | 1.3.3.11 | Añadir amigos | 11d? | 2013-03-25 | 2013-04-08 |  | 0d | finish no earlier than 2013-04-08 | Gonzalo.P.S | 88h |
| 48 | 1.3.3.12 | Investigacion de la sincronizacion del paso de mensajes | 24d? | 2013-03-25 | 2013-04-25 |  | 0d | finish no earlier than 2013-04-25 | Grupo Servidor (Daniel.L, Daniel.C, Gonzalo) | 192h |
| 49 | 1.3.3.13 | Borrar amigos | 6d? | 2013-04-01 | 2013-04-08 |  | 0d | finish no earlier than 2013-04-08 | Gonzalo.P.S | 48h |
| 50 | 1.3.3.14 | Gestion de los modos de juego. | 7d? | 2013-04-26 | 2013-05-06 |  | 0d | finish no earlier than 2013-05-06 | Grupo Servidor (Daniel.L, Daniel.C, Gonzalo) | 56h |
| 51 | 1.3.4 | **Sistema de menús completo** | 66d? | 2013-02-18 | 2013-05-20 | 25 | 0d |  | Grupo Menus (Beatriz, Federico) | 520h |
| 52 | 1.3.4.1 | Diseño de la pantalla de multijugador sin comunicacion con el servidor. | 6d? | 2013-02-18 | 2013-02-25 |  | 0d | finish no earlier than 2013-02-25 | Grupo Menus (Beatriz, Federico) | 48h |
| 53 | 1.3.4.2 | Menu de ayuda (simple y sin imagenes) | 5d? | 2013-02-26 | 2013-03-04 |  | 0d | start no earlier than 2013-02-26 | Grupo Menus (Beatriz, Federico) | 56h |
| 54 | 1.3.4.3 | Creacion del menu invitar amigos en creacion de partida. | 5d? | 2013-03-05 | 2013-03-11 |  | 0d | finish no earlier than 2013-03-11 | Grupo Menus (Beatriz, Federico) | 40h |
| 55 | 1.3.4.4 | Integracion de creacion de partida multijugador con el servidor. | 8d? | 2013-03-11 | 2013-03-20 |  | 0d | finish no earlier than 2013-03-20 | Grupo Menus (Beatriz, Federico) | 64h |
| 56 | 1.3.4.5 | Menu ayuda completo. | 4d? | 2013-03-21 | 2013-03-26 |  | 0d | finish no earlier than 2013-03-26 | Grupo Menus (Beatriz, Federico) | 24h |
| 57 | 1.3.4.6 | Login y creacion de usuarios. | 10d? | 2013-03-27 | 2013-04-09 |  | 0d | start no earlier than 2013-03-27 | Grupo Menus (Beatriz, Federico) | 88h |
| 58 | 1.3.4.7 | Salir del SFS al cerrar aplicacion y reg. de errores. | 3d? | 2013-04-10 | 2013-04-12 |  | 0d | finish no earlier than 2013-04-12 | Grupo Menus (Beatriz, Federico) | 24h |
| 59 | 1.3.4.8 | Añadir y borrar amigos | 18d? | 2013-04-15 | 2013-05-08 |  | 0d | finish no earlier than 2013-05-08 | Grupo Menus (Beatriz, Federico) | 64h |
| 60 | 1.3.4.9 | Revision y mejora de usabilidad (lista) | 8d? | 2013-05-09 | 2013-05-20 |  | 0d | finish no earlier than 2013-05-20 | Grupo Menus (Beatriz, Federico) | 112h |

| ID | WBS | Task | Duration | Start | Finish | Predecessors | Total slack | Constraint | Resources | Work |
| --- | --- | --- | --- | --- | --- | --- | --- | --- | --- | --- |
| 61 | 1.3.5 | **Logica del juego** | 64d? | 2013-02-20 | 2013-05-20 |  | 0d |  |  | 936h |
| 62 | 1.3.5.1 | Mejora de interfaz (barriles y iglus). | 2d? | 2013-02-20 | 2013-02-21 |  | 0d | finish no earlier than 2013-02-21 | Grupo Reglas de Juego (Diego, María, Ricardo) | 16h |
| 63 | 1.3.5.2 | Mejora del movimiento normal. | 3d? | 2013-02-21 | 2013-02-25 |  | 0d | start no earlier than 2013-02-21 | Grupo Reglas de Juego (Diego, María, Ricardo) | 24h |
| 64 | 1.3.5.3 | Movimiento inteligente. | 3d? | 2013-02-25 | 2013-02-27 |  | 0d | finish no earlier than 2013-02-27 | Grupo Reglas de Juego (Diego, María, Ricardo) | 24h |
| 65 | 1.3.5.4 | Multitouch y arreglo de colocacion de arpones. | 2d? | 2013-02-27 | 2013-02-28 |  | 0d | finish no earlier than 2013-02-28 | Grupo Reglas de Juego (Diego, María, Ricardo) | 16h |
| 66 | 1.3.5.5 | Mejora interfaz (vidas, usuario, controles) | 3d? | 2013-02-27 | 2013-03-01 |  | 0d | finish no earlier than 2013-03-01 | Grupo Reglas de Juego (Diego, María, Ricardo) | 24h |
| 67 | 1.3.5.6 | Animacion agua y grietas. | 4d? | 2013-02-27 | 2013-03-04 |  | 0d | finish no earlier than 2013-03-04 | Concepción.N.M | 32h |
| 68 | 1.3.5.7 | Explosion de arpones. | 10d? | 2013-03-04 | 2013-03-15 |  | 0d | finish no earlier than 2013-03-15 | Grupo Reglas de Juego (Diego, María, Ricardo) | 80h |
| 69 | 1.3.5.8 | Muerte de jugadores y finalizacion de partida. | 9d? | 2013-03-05 | 2013-03-15 |  | 0d | finish no earlier than 2013-03-15 | Concepción.N.M | 32h |
| 70 | 1.3.5.9 | Mejoras (menos mover arpon) | 13d? | 2013-03-22 | 2013-04-09 |  | 0d | start no earlier than 2013-03-22 | Concepción.N.M; Grupo Reglas de Juego (Diego, María, Ricardo) | 208h |
| 71 | 1.3.5.10 | Mejora: mover arpon. | 10d? | 2013-04-12 | 2013-04-25 |  | 0d | finish no earlier than 2013-04-25 | Concepción.N.M; Grupo Reglas de Juego (Diego, María, Ricardo) | 160h |
| 72 | 1.3.5.11 | Testeo del modo normal. | 5d? | 2013-04-25 | 2013-05-01 |  | 0d | finish no earlier than 2013-05-01 | Concepción.N.M; Grupo Reglas de Juego (Diego, María, Ricardo) | 80h |
| 73 | 1.3.5.12 | Modos de juego. | 15d? | 2013-04-30 | 2013-05-20 |  | 0d | finish no earlier than 2013-05-20 | Concepción.N.M; Grupo Reglas de Juego (Diego, María, Ricardo) | 240h |
| 74 | 1.3.6 | Integración de sonidos y música de la aplicación | 6d | 2013-04-25 | 2013-05-02 |  | 0d | start no earlier than 2013-04-25 | Concepción.N.M | 48h |
| 75 | 1.4 | **Fase Transición** | 0.6mo | 2013-05-21 | 2013-06-05 | 33 | 0d |  |  | 288h |
| 76 | 1.4.1 | Testeo de la aplicación 1 | 2d | 2013-05-21 | 2013-05-22 |  | 0d |  | Beatriz.G.C; Concepción.N.M; Daniel.C.R | 48h |
| 77 | 1.4.2 | Corrección de errores 1 | 2d | 2013-05-23 | 2013-05-24 | 76 | 0d |  | Daniel.L.C; Diego.A.G; Federico.G.A | 48h |
| 78 | 1.4.3 | Testeo de la aplicación 2 | 2d | 2013-05-27 | 2013-05-28 | 77 | 0d |  | Gonzalo.P.S; Maria.D.C; Ricardo.C.B | 48h |
| 79 | 1.4.4 | Corrección de errores 2 | 2d | 2013-05-29 | 2013-05-30 | 78 | 0d |  | Beatriz.G.C; Concepción.N.M; Daniel.C.R | 48h |
| 80 | 1.4.5 | Presentación de la aplicación a gente ajena al proyecto | 12d | 2013-05-21 | 2013-06-05 |  | 0d |  | TODOS | 96h |
